# WBS for PC CSD1800202C – BI Compliance Phase 1 (1 rekening 2 kartu)(12 May 2020)

Schedule from MS Project, 2018-07-16 to 2020-07-20.

## Calendars

- Standard: Mon-Fri 08:00-12:00, 13:00-17:00; Sat-Sun off. Exceptions (off unless hours are given): 2018-08-17 (Hari Kemerdekaan), 2018-08-22 (Idul Adha), 2018-09-11 (Tahun Baru Islam), 2018-10-21 08:00-12:00, 13:00-17:00, 2018-11-20 (Maulid Nabi Muhammad SAW), 2018-12-25 (Cuti Bersama Hari Natal), 2019-01-01 (Tahun Baru 2019 Masehi), 2019-02-05 (Tahun Baru Imlek 2570 Kongzili), 2019-03-07 (Hari Raya Nyepi Tahun Baru Saka 1941), 2019-04-03 (Isra Mikraj Nabi Muhammad SAW), 2019-04-19 (Wafat Isa Al Masih), 2019-05-01 (Hari Buruh Internasional), 2019-05-19 (Hari Raya Waisak 2563), 2019-05-30 (Kenaikan Isa Almasih), 2019-06-01 (Hari Lahir Pancasila), 2019-06-03 to 2019-06-07 (Cuti bersama Hari Raya Idul Fitri 1440 Hijriyah), 2019-09-01 (Hari Raya Idul Adha 1440 Hijriyah), 2019-11-09 (Maulid Nabi Muhammad SAW), 2019-12-24 to 2019-12-25 (Cuti bersama Hari Raya Natal), 2020-01-01 (Tahun Baru Masehi), 2020-01-25 (Tahun Baru Imlek), 2020-03-22 (Isra Miraj), 2020-03-25 (Hari Suci Nyepi), 2020-04-10 (Jumat Agung), 2020-05-01 (Hari Buruh), 2020-05-07 (Hari Waisak), 2020-05-21 (Kenaikan Isa Almasih), 2020-05-22 to 2020-05-25 (Cuti Bersama Lebaran), 2020-06-01 (Hari Lahir Pancasila).

## Schedule

| ID | WBS | Task | Type | Duration | Start | Finish | Predecessors | Total slack | Free slack | Constraint | New Start Date R2 |
| --- | --- | --- | --- | --- | --- | --- | --- | --- | --- | --- | --- |
| 1 | 1 | **Project Execution (Software)** |  | 499d | 2018-07-16 | 2020-07-20 |  | 0d |  |  | NA |
| 2 | 1.1 | **Solution Definition** |  | 474d | 2018-07-16 | 2020-06-15 |  | 25d |  |  | NA |
| 3 | 1.1.1 | **Penyusunan Project Charter** |  | 474d | 2018-07-16 | 2020-06-15 |  | 25d |  |  |  |
| 4 | 1.1.1.1 | Project Charter (Addendum) |  | 444d | 2018-07-16 | 2020-04-24 |  | 49d |  | start no earlier than 2018-07-16 |  |
| 5 | 1.1.1.2 | Project Charter (Addendum) v4.0 | manual | 31d | 2020-04-24 | 2020-06-15 |  |  |  |  |  |
| 6 | 1.1.2 | **Procurement** |  | 251d | 2018-08-20 | 2019-08-26 |  | 224d |  |  |  |
| 7 | 1.1.2.1 | Scope of Work & BoQ |  | 10d | 2018-08-20 | 2019-08-26 |  | 218d |  | start no earlier than 2018-08-20 |  |
| 8 | 1.1.3 | **Penyusunan FSD** |  | 263d | 2018-09-06 | 2019-09-27 |  | 200d |  |  | NA |
| 9 | 1.1.3.1 | FSD |  | 10d | 2018-09-06 | 2019-09-27 |  | 194d |  | start no earlier than 2018-09-06 | NA |
| 10 | 1.1.4 | **Penyusunan TSD** |  | 265d | 2018-09-13 | 2019-10-07 |  | 194d |  |  | NA |
| 11 | 1.1.4.1 | TSD |  | 10d | 2018-09-13 | 2019-10-04 |  | 188d | 0d | start no earlier than 2018-09-13 | NA |
| 12 | 1.1.4.2 | RTM Part 1 |  | 1d | 2019-10-07 | 2019-10-07 | 11 | 188d |  |  | NA |
| 13 | 1.2 | **Solution Development** |  | 412d | 2018-10-01 | 2020-05-29 |  | 0d |  |  | NA |
| 14 | 1.2.1 | Customize Package Solution & Custom Development | manual | 24d | 2018-10-01 | 2019-10-11 |  |  |  | start no earlier than 2018-10-01 | NA |
| 15 | 1.2.2 | Developer testing |  | 5d | 2019-10-14 | 2019-10-18 | 14 | 130d | 0d | start no earlier than 2018-11-07 | NA |
| 16 | 1.2.3 | **Penyusunan Petunjuk Teknis Operasional** |  | 81d | 2020-01-29 | 2020-05-29 |  | 0d |  |  | NA |
| 17 | 1.2.3.1 | PTO | manual | 80d | 2020-01-29 | 2020-05-29 |  |  |  | start no earlier than 2020-01-29 | NA |
| 18 | 1.3 | **Solution Testing** |  | 155d | 2019-10-18 | 2020-06-08 |  | 26d |  |  | NA |
| 19 | 1.3.1 | **Test Plan & Design** |  | 8d | 2019-10-18 | 2019-10-30 |  | 136d |  |  | NA |
| 20 | 1.3.1.1 | Testing Management Plan |  | 1d | 2019-10-18 | 2019-10-21 | 15 | 130d | 0d | start no earlier than 2018-11-12 | NA |
| 21 | 1.3.1.2 | RTM Part 2 |  | 1d | 2019-10-22 | 2019-10-22 | 20, 15 | 130d | 0d |  | NA |
| 22 | 1.3.1.3 | SIT Script |  | 2d | 2019-10-23 | 2019-10-24 | 21 | 130d | 0d |  | NA |
| 23 | 1.3.1.4 | UAT Script |  | 2d | 2019-10-25 | 2019-10-28 | 22 | 130d | 0d |  | NA |
| 24 | 1.3.1.5 | Testing Request Form |  | 1d | 2019-10-29 | 2019-10-29 | 23 | 130d | 0d |  | NA |
| 25 | 1.3.1.6 | SMF VIT To SIT |  | 1d | 2019-10-29 | 2019-10-30 | 24 | 130d | 0d |  | NA |

| ID | WBS | Task | Type | Duration | Start | Finish | Predecessors | Total slack | Free slack | Constraint | New Start Date R2 |
| --- | --- | --- | --- | --- | --- | --- | --- | --- | --- | --- | --- |
| 26 | 1.3.2 | **System Integration Test** |  | 21d | 2019-10-31 | 2019-11-28 |  | 18d |  |  | NA |
| 27 | 1.3.2.1 | SIT Report |  | 20d | 2019-10-31 | 2019-11-27 | 25 | 130d | 0d | finish no earlier than 2019-10-25 |  |
| 28 | 1.3.2.2 | SIT Sign Off |  | 1d | 2019-11-27 | 2019-11-27 | 27FF | 156d | 0d | start no earlier than 2019-10-25 | NA |
| 29 | 1.3.2.3 | SMF SIT to UAT | manual | 1d | 2019-11-26 | 2019-11-27 | 27FF |  |  |  | NA |
| 30 | 1.3.2.4 | RAF SIT | manual | 1d | 2019-11-28 | 2019-11-28 | 28 |  |  |  | NA |
| 31 | 1.3.3 | **User Acceptance Test** |  | 20d | 2019-11-28 | 2019-12-27 |  | 136d |  |  | NA |
| 32 | 1.3.3.1 | UAT Report |  | 20d | 2019-11-28 | 2019-12-27 | 29 | 130d | 0d |  | NA |
| 33 | 1.3.3.2 | UAT Sign Off |  | 1d | 2019-12-27 | 2019-12-27 | 32FF | 131d |  |  | NA |
| 34 | 1.3.4 | **System Acceptance Testing/Retesting after Merging** |  | 107d | 2019-12-30 | 2020-06-08 |  | 30d |  |  | NA |
| 35 | 1.3.4.1 | SAT Form* |  | 1d | 2019-12-30 | 2019-12-30 | 32 | 130d |  |  | NA |
| 36 | 1.3.4.2 | Merging |  | 2d | 2020-06-02 | 2020-06-03 | 17 | 0d |  |  | NA |
| 37 | 1.3.4.3 | Test after merging |  | 3d | 2020-06-04 | 2020-06-08 | 36 | 0d |  |  | NA |
| 38 | 1.4 | **Solution Deployment** |  | 30d | 2020-06-09 | 2020-07-20 |  | 0d |  |  | NA |
| 39 | 1.4.1 | **Deployment Management Plan** |  | 2d | 2020-06-09 | 2020-06-10 |  | 0d |  |  | NA |
| 40 | 1.4.1.1 | Deployment Management Plan |  | 2d | 2020-06-09 | 2020-06-10 | 37 | 0d |  |  | NA |
| 41 | 1.4.2 | **Migration Ready** |  | 12d | 2020-06-11 | 2020-06-26 |  | 0d |  |  | NA |
| 42 | 1.4.2.1 | Nota Migrasi |  | 2d | 2020-06-11 | 2020-06-12 | 40 | 0d |  |  |  |
| 43 | 1.4.2.2 | PTR Script |  | 2d | 2020-06-15 | 2020-06-16 | 42 | 0d |  | start no earlier than 2020-02-04 | NA |
| 44 | 1.4.2.3 | PMF |  | 1d | 2020-06-19 | 2020-06-22 | 43FS+3d | 0d |  | start no earlier than 2020-03-06 |  |
| 45 | 1.4.2.4 | Migration |  | 1d | 2020-06-26 | 2020-06-26 | 44FS+3d | 0d |  |  |  |
| 46 | 1.4.3 | **Production Trial Run** |  | 12d | 2020-06-29 | 2020-07-14 |  | 0d |  |  |  |
| 47 | 1.4.3.1 | BA PTR |  | 10d | 2020-06-29 | 2020-07-10 | 45 | 0d |  |  |  |
| 48 | 1.4.3.2 | Checklist Handover Operasional |  | 2d | 2020-07-13 | 2020-07-14 | 47 | 4d |  |  |  |
| 49 | 1.4.4 | **Live Implementation** |  | 1d | 2020-07-10 | 2020-07-13 |  | 0d |  |  |  |
| 50 | 1.4.4.1 | Nota Usulan Live Implementation RCB |  | 1d | 2020-07-10 | 2020-07-13 | 47 | 0d |  | finish no earlier than 2020-03-10 |  |

| ID | WBS | Task | Duration | Start | Finish | Predecessors | Total slack |
| --- | --- | --- | --- | --- | --- | --- | --- |
| 51 | 1.4.5 | **Project Closing** | 5d | 2020-07-14 | 2020-07-20 |  | 0d |
| 52 | 1.4.5.1 | Nota Usulan Project Closure | 1d | 2020-07-14 | 2020-07-14 | 50 | 4d |
| 53 | 1.4.5.2 | PIR | 5d | 2020-07-14 | 2020-07-20 | 50 | 0d |
